Schedule from MS Project, 2018-07-02 to 2018-07-30.
Microsoft

## Calendars

- 标准: Mon-Fri 08:00-12:00, 13:00-17:00; Sat-Sun off.

## Resources

| Resource |
| --- |
| 吴东升 |
| 赖海威 |
| 吴杰威 |
| 袁罗秀 |
| 许晓佳 |

## Schedule

| ID | WBS | Task | Type | Duration | Start | Finish | Predecessors | Resources | Work |
| --- | --- | --- | --- | --- | --- | --- | --- | --- | --- |
| 1 | 1 | **精品课程开发与管理系统** |  | 21d | 2018-07-02 | 2018-07-30 |  |  | 104h |
| 2 | 1.1 | **先启阶段** |  | 6d | 2018-07-02 | 2018-07-07 |  |  | 104h |
| 3 | 1.1.1 | **项目管理** |  | 1d | 2018-07-02 | 2018-07-02 |  |  | 16h |
| 4 | 1.1.1.1 | 项目立项 | manual | 0.5d | 2018-07-02 | 2018-07-02 |  | 吴东升 | 4h |
| 5 | 1.1.1.2 | 制定项目计划 | manual | 0.5d | 2018-07-02 | 2018-07-02 | 4 | 吴东升 | 4h |
| 6 | 1.1.1.3 | 同行评审 | manual | 1d | 2018-07-02 | 2018-07-02 |  | 赖海威 | 8h |
| 7 | 1.1.2 | **配置管理** |  | 2d | 2018-07-03 | 2018-07-04 |  |  | 16h |
| 8 | 1.1.2.1 | 制定配置计划 | manual | 1d | 2018-07-03 | 2018-07-03 |  | 吴杰威 | 8h |
| 9 | 1.1.2.2 | 搭建配置环境 | manual | 1d | 2018-07-04 | 2018-07-04 | 8 | 吴杰威 | 8h |
| 10 | 1.1.3 | **需求开发** |  | 2d | 2018-07-05 | 2018-07-06 |  |  | 48h |
| 11 | 1.1.3.1 | 用例建模 | manual | 1d | 2018-07-05 | 2018-07-05 |  | 袁罗秀; 许晓佳; 吴杰威 | 24h |
| 12 | 1.1.3.2 | 用例阐述 | manual | 1d | 2018-07-06 | 2018-07-06 | 11 | 袁罗秀; 许晓佳; 吴杰威 | 24h |
| 13 | 1.1.4 | **阶段评审** |  | 1d | 2018-07-07 | 2018-07-07 |  |  | 24h |
| 14 | 1.1.4.1 | 评审需求工件 | manual | 1d | 2018-07-07 | 2018-07-07 |  | 赖海威; 吴东升 | 16h |
| 15 | 1.1.4.2 | 发布需求基线 | manual | 1d | 2018-07-07 | 2018-07-07 |  | 吴杰威 | 8h |
